# Desarrollo Validador de Portales

How a schedule from Planner changed from version to version. A marks actual dates.

## Version 1 (saved 2010-08-19)

Note of the change: Agregando el Cronograma de Trabajo de las Fases

| ID | WBS | Task | Duration | Start | Finish | Predecessors | Complete | Constraint |
| --- | --- | --- | --- | --- | --- | --- | --- | --- |
| 1 | 1 | **CNTI-14-09** |  | 2009-11-25 | 2010-07-09 |  |  |  |
| 2 | 1.1 | **Sprint I** |  | 2009-11-25 | 2010-02-12 |  |  |  |
| 3 | 1.1.1 | **Diseño** |  | 2009-11-25 | 2010-02-02 |  |  |  |
| 4 |  | Análisis Inicial de Requerimientos sobre TDR |  | 2009-11-25 | 2009-11-26 |  |  |  |
| 5 |  | Diseño Inicial del prototipo |  | 2009-11-27 | 2009-12-03 | 4 |  |  |
| 6 |  | Reunión Inicial con el Product Owner |  | 2010-01-19 | 2010-01-19 |  | 7% | must start on 2010-01-19 |
| 7 |  | Plan Director |  | 2010-01-19 | 2010-01-20 | 6 |  |  |
| 8 |  | Especificaciones Suplementarias |  | 2010-01-20 | 2010-01-21 | 7 |  |  |
| 9 |  | Manual del estilo Web. |  | 2010-01-21 | 2010-01-22 | 8 |  |  |
| 10 |  | Especificación de Requerimientos del Sistema Actualizados |  | 2010-01-22 | 2010-01-27 | 9 |  |  |
| 11 |  | Documento de Arquitectura de Software |  | 2010-01-27 | 2010-02-01 | 10 |  |  |
| 12 |  | Revisión y Envio |  | 2010-02-01 | 2010-02-02 | 11 |  |  |
| 13 | 1.1.2 | **Desarrollo** |  | 2010-02-02 | 2010-02-04 | 3 |  |  |
| 14 |  | Desarrollo de Estilo Base Inicial (Prototipo) |  | 2010-02-02 | 2010-02-04 | 5 |  |  |
| 15 |  | Desarrollo de Modulo para Cargar Archivo Inicial (Prototipo) | 0.75d | 2010-02-02 | 2010-02-03 |  | 100% |  |
| 16 |  | Desarrollo de Modulo de Evaluación de Portales (2 disposiciones) (Prototipo) |  | 2010-02-02 | 2010-02-03 |  |  |  |
| 17 |  | Desarrollo Modulo de Resultados (Prototipo) |  | 2010-02-02 | 2010-02-03 |  |  |  |
| 18 |  | Desarrollo de Plantilla de Resultados en Formato Pdf Inicial (Prototipo) |  | 2010-02-02 | 2010-02-03 |  | 14% |  |
| 19 | 1.1.3 | **Pruebas** |  | 2010-02-04 | 2010-02-11 | 13 |  |  |
| 20 |  | Caso Prueba Cargar Portales Prototipo V.1.0 |  | 2010-02-04 | 2010-02-11 | 14 |  |  |
| 21 |  | Caso Prueba Evaluar Portales Prototipo V.1.0 |  | 2010-02-04 | 2010-02-05 |  |  |  |
| 22 |  | Caso Prueba Seleccionar Portales Prototipo V.1.0 |  | 2010-02-04 | 2010-02-05 |  |  |  |
| 23 |  | Pruebas de Cobertura del Prototipo V.1.0 |  | 2010-02-04 | 2010-02-05 |  |  |  |
| 24 | 1.1.4 | **Documentación** |  | 2009-11-25 | 2010-02-12 |  |  |  |
| 25 |  | Elaboración de Manual de Instalación de Prototipo V.1.0 | 1d | 2010-02-11 | 2010-02-12 | 20 |  |  |
| 26 |  | Elaboración del Documento de Arquitectura del Sistema del Prototipo V.1.0 |  | 2009-11-25 | 2009-11-25 |  |  |  |
| 27 |  | Elaboración del Documento de Especificaciones de Requerimientos del Sistema del Prototipo V.1.0 |  | 2009-11-25 | 2009-11-25 |  |  |  |
| 28 |  | Elaboración del Documento de Especificaciones Suplementarias del Prototipo V.1.0 |  | 2009-11-25 | 2009-11-25 |  |  |  |
| 29 |  | Elaboración del Documentación del Conjunto de Casos de Pruebas V.1.0 |  | 2009-11-25 | 2009-11-25 |  | 42% |  |
| 30 |  | Elaboración del Documento de Resultados de Pruebas de Cobertura del Prototipo V1.0 |  | 2009-11-25 | 2009-11-25 |  |  |  |
| 31 |  | Primera Entrega | 0d | 2010-02-02 | 2010-02-02 |  |  | must start on 2010-02-02 |
| 32 | 1.2 | **Sprint II** |  | 2010-04-13 | 2010-05-30 |  |  |  |
| 33 |  | Reunión Inicial Planificación Sprint |  | 2010-04-13 | 2010-04-13 |  |  | must start on 2010-04-13 |
| 34 | 1.2.2 | **Diseño** |  | 2010-04-13 | 2010-04-19 | 33 |  |  |
| 35 |  | Actualización del Diseño del Prototipo V.2.0 |  | 2010-04-19 | 2010-04-19 |  |  | must start on 2010-04-19 |
| 36 |  | Segunda Reunión con el Product Owner |  | 2010-04-13 | 2010-04-13 |  |  |  |
| 37 |  | Actualización de las Especificaciones de los Requerimientos del Sistema V.2.0 |  | 2010-04-13 | 2010-04-13 |  |  |  |
| 38 |  | Actualización de la Arquitectura de Software V.2.0 |  | 2010-04-14 | 2010-04-14 | 37 |  |  |
| 39 |  | Diseño de la arquitectura para el subsistema de verificaciones |  | 2010-04-13 | 2010-04-13 |  |  |  |
| 40 |  | Especificar API del subsistema de pruebas |  | 2010-04-13 | 2010-04-14 | 39 |  |  |
| 41 | 1.2.3 | **Desarrollo** |  | 2010-04-13 | 2010-04-29 | 33 |  |  |
| 42 |  | Crear Layout Base |  | 2010-04-13 | 2010-04-15 |  |  |  |
| 43 |  | Crear Estilo para el Layout Base |  | 2010-04-16 | 2010-04-20 | 42 |  |  |
| 44 |  | Crear Estilo de Formularios |  | 2010-04-20 | 2010-04-21 | 43 |  |  |
| 45 |  | Crear Estilo para los mensajes del sistema |  | 2010-04-21 | 2010-04-21 | 44 |  |  |
| 46 |  | Crear Formulario de Registro de Entidades Verificadoras |  | 2010-04-13 | 2010-04-14 |  |  |  |
| 47 |  | Crear Vista Reporte de Entidades Verificadoras |  | 2010-04-21 | 2010-04-22 | 45 |  |  |
| 48 |  | Crear Formulario de Registro de Instituciones | 0.75d | 2010-04-22 | 2010-04-23 | 47 |  |  |
| 49 |  | Crear Vista Reporte de Instituciones |  | 2010-04-13 | 2010-04-14 |  |  |  |
| 50 |  | Crear Modelado de Datos del Sistema |  | 2010-04-23 | 2010-04-26 | 48 |  |  |
| 51 |  | Desarrolo de la API del subsistema de pruebas |  | 2010-04-26 | 2010-04-28 | 50 |  |  |
| 52 |  | Elaborar tests para el subsistema de pruebas |  | 2010-04-28 | 2010-04-29 | 51 |  |  |
| 53 |  | Revisiones Finales |  | 2010-04-29 | 2010-04-29 | 52 |  |  |
| 54 | 1.2.3.13 | **Desarrollo de Disposiciones** |  | 2010-04-13 | 2010-04-22 |  |  |  |
| 55 |  | Verifcar el Uso de HTML 4.01 o XHTML 1.0 para la estructura organizativa de portales |  | 2010-04-13 | 2010-04-14 |  |  |  |
| 56 |  | Ofrecer un enlace al manual de aplicaciones básicas del MINCI. |  | 2010-04-14 | 2010-04-14 | 55 |  |  |
| 57 |  | Verificar el uso de imágenes y gráficos en formato PNG |  | 2010-04-14 | 2010-04-15 | 56 |  |  |
| 58 |  | Verificar el uso del atributo ALT, en la etiqueta IMG |  | 2010-04-15 | 2010-04-15 | 57 |  |  |
| 59 |  | Verificar el uso de Unicode 8 bit (UTF-8) como codificación del juego de caracteres |  | 2010-04-15 | 2010-04-16 | 58 |  |  |
| 60 |  | Verificar el uso de lenguaje Javascript |  | 2010-04-16 | 2010-04-16 | 59 |  |  |
| 61 |  | Verificar la existencia de archivos con extensión “.js” |  | 2010-04-19 | 2010-04-19 | 60 |  |  |
| 62 |  | Ofrecer un enlace al validador del la W3C |  | 2010-04-19 | 2010-04-19 | 61 |  |  |
| 63 |  | Verificar el uso de la etiqueta TITLE |  | 2010-04-20 | 2010-04-20 | 62 |  |  |
| 64 |  | Elaborar Tabla Reporte Web de Auditorías |  | 2010-04-20 | 2010-04-21 | 63 |  |  |
| 65 |  | Elaborar Reporte Individual por Auditoría |  | 2010-04-21 | 2010-04-21 | 64 |  |  |
| 66 |  | Gestionar Reportes del sistema |  | 2010-04-22 | 2010-04-22 | 65 |  |  |
| 67 |  | Elaborar módulo básico de autenticación |  | 2010-04-13 | 2010-04-14 |  |  |  |
| 68 | 1.2.4 | **Pruebas** |  | 2010-04-29 | 2010-05-03 | 13 |  |  |
| 69 |  | Conjunto de Casos de Pruebas Definidos para este Sprint |  | 2010-04-29 | 2010-04-30 | 53 |  |  |
| 70 |  | Pruebas de Cobertura al Sistema V.2.0 |  | 2010-04-30 | 2010-05-03 | 69 |  |  |

| ID | WBS | Task | Duration | Start | Finish | Predecessors | Constraint |
| --- | --- | --- | --- | --- | --- | --- | --- |
| 71 | 1.2.5 | **Documentación** |  | 2010-04-13 | 2010-04-30 | 33 |  |
| 72 |  | Actualización del Manual de Instalación del Prototipo V.2.0 |  | 2010-04-13 | 2010-04-15 |  |  |
| 73 |  | Elaboración del Manual de Usuario V.1.0 |  | 2010-04-15 | 2010-04-19 | 72 |  |
| 74 |  | Elaboració de Documentación de la API del subsistema de pruebas V.1.0 |  | 2010-04-19 | 2010-04-21 | 73 |  |
| 75 |  | Actualización del Documento de Arquitectura del Sistema del Prototipo V.2.0 |  | 2010-04-21 | 2010-04-23 | 74 |  |
| 76 |  | Actualización del Documento de Especificaciones de Requerimientos del Sistema del Prototipo V.2.0 |  | 2010-04-23 | 2010-04-26 | 75 |  |
| 77 |  | Actualización del Documento del Conjunto de Casos de Pruebas V.2.0 |  | 2010-04-26 | 2010-04-28 | 76 |  |
| 78 |  | Actualización de los Diagramas del Sistema |  | 2010-04-28 | 2010-04-30 | 77 |  |
| 79 |  | Segunda Entrega | 0d | 2010-05-31 | 2010-05-31 |  | must start on 2010-05-31 |
| 80 | 1.3 | **Sprint III** |  | 2009-11-25 | 2010-06-20 |  |  |
| 81 |  | Reunión Inicial de Planificación del Sprint |  | 2010-05-18 | 2010-05-18 |  | must start on 2010-05-18 |
| 82 | 1.3.2 | **Diseño** |  | 2010-05-18 | 2010-05-24 | 81 |  |
| 83 |  | Actualización del Diseño del Prototipo V.3.0 |  | 2010-05-18 | 2010-05-19 |  |  |
| 84 |  | Tercera Reunión con el Product Owner |  | 2010-05-18 | 2010-05-19 |  |  |
| 85 |  | Actualización del Manual del estilo Web V.3.0 |  | 2010-05-18 | 2010-05-20 |  |  |
| 86 |  | Actualización de las Especificaciones de los Requerimientos del Sistema V.3.0 |  | 2010-05-18 | 2010-05-19 |  |  |
| 87 |  | Actualización del Documento de Arquitectura de Software V.3.0 |  | 2010-05-18 | 2010-05-24 |  |  |
| 88 |  | Actualización de los Diagramas del Sistema |  | 2010-05-18 | 2010-05-19 |  |  |
| 89 | 1.3.3 | **Desarrollo** |  | 2009-11-25 | 2009-12-28 |  |  |
| 90 |  | Crear Modulo de Autentificación y Autorización |  | 2009-11-25 | 2009-11-26 |  |  |
| 91 |  | Desarrollar Disposición para Verificar el uso de fuentes libres (Tipografia existente en las paginas HTML y archivos CSS) |  | 2009-11-26 | 2009-11-30 | 90 |  |
| 92 |  | Desarrollar Disposición para Verificar el uso de controladores añadibles |  | 2009-11-30 | 2009-12-03 | 91 |  |
| 93 |  | Desarrollar Disposición para Verificar el uso de metaetiquetas en el encabezado de los Archivos de Hipertexto |  | 2009-12-03 | 2009-12-07 | 92 |  |
| 94 |  | Desarrollar Disposición para Verificar la seguridad de la capa de transporte del portal. |  | 2009-12-07 | 2009-12-10 | 93 |  |
| 95 |  | Desarrollar Disposición para Verificar la disponibilidad de archivos para descargar, con formatos propietarios |  | 2009-12-10 | 2009-12-14 | 94 |  |
| 96 |  | Desarrollar Disposición para Verificar en la maquetación gráfica el uso de elementos HTML, tales como tablas y marcos |  | 2009-12-14 | 2009-12-16 | 95 |  |
| 97 |  | Desarrollar Módulo para Validar usuario |  | 2009-12-16 | 2009-12-21 | 96 |  |
| 98 |  | Elaborar Reporte PDF de Cada Auditoría |  | 2009-12-21 | 2009-12-23 | 97 |  |
| 99 |  | Elaborar filtros a la tabla de reportes |  | 2009-12-23 | 2009-12-25 | 98 |  |
| 100 |  | Revisiones Finales |  | 2009-12-25 | 2009-12-28 | 99 |  |
| 101 | 1.3.4 | **Pruebas** |  | 2010-02-04 | 2010-02-05 | 13 |  |
| 102 |  | Casos de Pruebas Definidos para este Sprint |  | 2010-02-04 | 2010-02-05 |  |  |
| 103 |  | Resultados de las Pruebas |  | 2010-02-04 | 2010-02-05 |  |  |
| 104 | 1.3.5 | **Documentación** |  | 2009-11-25 | 2010-01-19 |  |  |
| 105 |  | Actualización del Manual de Instalación del Prototipo V.3.0 |  | 2009-12-28 | 2009-12-31 | 100 |  |
| 106 |  | Actualización del Manual de Usuario V.2.0 |  | 2009-12-31 | 2010-01-06 | 105 |  |
| 107 |  | Actualización Documentación de la API del subsistema de pruebas V.3.0 |  | 2010-01-06 | 2010-01-08 | 106 |  |
| 108 |  | Actualización del Documento de Arquitectura del Sistema del Prototipo V.3.0 |  | 2010-01-08 | 2010-01-13 | 107 |  |
| 109 |  | Actualización del Documento de Especificaciones de Requerimientos del Sistema del Prototipo V.3.0 |  | 2010-01-13 | 2010-01-15 | 108 |  |
| 110 |  | Actualización del Documento de Especificaciones Suplementarias del Prototipo V.3.0 |  | 2009-11-25 | 2009-11-25 |  |  |
| 111 |  | Actualización del Documento del Conjunto de Casos de Pruebas V.3.0 |  | 2010-01-15 | 2010-01-19 | 109 |  |
| 112 |  | Actualización de los Diagramas del Sistema |  | 2009-11-25 | 2009-11-25 |  |  |
| 113 |  | Tercera Entrega | 0d | 2010-06-21 | 2010-06-21 |  | must start on 2010-06-21 |
| 114 | 1.4 | **Documentación Capacitación** |  | 2010-06-21 | 2010-06-29 |  |  |
| 115 |  | Diseño Instruccional de Capacitacion V.1.0 |  | 2010-06-21 | 2010-06-25 | 111 | start no earlier than 2010-06-21 |
| 116 |  | Plan de Formacion de Capacitaciones V.1.0 |  | 2010-06-28 | 2010-06-28 | 115 |  |
| 117 |  | Presentación para Capacitacion V.1.0 |  | 2010-06-29 | 2010-06-29 | 116 |  |
| 118 | 1.5 | **Implementación** |  | 2010-06-28 | 2010-07-09 |  |  |
| 119 |  | Implementación |  | 2010-06-28 | 2010-07-02 |  | must start on 2010-06-28 |
| 120 |  | Transferencia |  | 2010-07-05 | 2010-07-09 | 119 |  |
| 121 | 1.6 | **Cierre Administrativo** |  | 2010-05-10 | 2010-05-10 |  |  |
| 122 |  | Envio de Factura | 0d | 2010-05-10 | 2010-05-10 |  | must start on 2010-05-10 |

## Version 2 (saved 2010-09-22)

Note of the change: Agregando Caso de Uso Deshabilitar Usuarios y Entidades Verificadoras

Last finish 2010-07-09 → 2010-09-27 (+80d).

Changed:

| ID | Task | Start | Finish | Other |
| --- | --- | --- | --- | --- |
| 1 | **CNTI-14-09** |  | 2010-07-09 → 2010-09-26 (+79d) |  |
| 4 | Análisis Inicial de Requerimientos sobre TDR |  |  | resources Lilibeth Ramírez [30%]; Walter Vargas [35%]; Juan Mesa [35%] → Juan Mesa [35%]; Walter Vargas [35%]; Lilibeth Ramírez [30%] |
| 5 | Diseño Inicial del prototipo |  |  | resources Lilibeth Ramírez [20%]; Walter Vargas [40%]; Juan Mesa [40%] → Juan Mesa [40%]; Walter Vargas [40%]; Lilibeth Ramírez [20%] |
| 8 | Especificaciones Suplementarias |  |  | resources Lilibeth Ramírez [50%]; Julio Cesar Vera [50%] → Julio Cesar Vera [50%]; Lilibeth Ramírez [50%] |
| 10 | Especificación de Requerimientos del Sistema Actualizados |  |  | resources Lilibeth Ramírez [40%]; Walter Vargas [40%]; Juan Mesa [20%] → Juan Mesa [20%]; Walter Vargas [40%]; Lilibeth Ramírez [40%] |
| 11 | Documento de Arquitectura de Software |  |  | resources Lilibeth Ramírez [50%]; Julio Cesar Vera [50%] → Julio Cesar Vera [50%]; Lilibeth Ramírez [50%] |
| 12 | Revisión y Envio |  |  | resources Lilibeth Ramírez [30%]; Julio Cesar Vera [30%]; Walter Vargas [20%]; Juan Mesa [20%] → Juan Mesa [20%]; Walter Vargas [20%]; Julio Cesar Vera [30%]; Lilibeth Ramírez [30%] |
| 20 | Caso Prueba Cargar Portales Prototipo V.1.0 |  |  | resources Lilibeth Ramírez [10%]; Walter Vargas [50%]; Juan Mesa [40%] → Juan Mesa [40%]; Walter Vargas [50%]; Lilibeth Ramírez [10%] |
| 39 | Diseño de la arquitectura para el subsistema de verificaciones |  |  | resources José Rey; Walter Vargas; Juan Mesa → Juan Mesa; Walter Vargas; José Rey |
| 40 | Especificar API del subsistema de pruebas |  |  | resources José Rey; Walter Vargas; Juan Mesa → Juan Mesa; Walter Vargas; José Rey |
| 42 | Crear Layout Base |  |  | resources José Rey [10%]; Walter Vargas [35%]; Juan Mesa [35%] → Juan Mesa [35%]; Walter Vargas [35%]; José Rey [10%] |
| 43 | Crear Estilo para el Layout Base |  |  | resources Walter Vargas [40%]; Juan Mesa [30%] → Juan Mesa [30%]; Walter Vargas [40%] |
| 44 | Crear Estilo de Formularios |  |  | resources Walter Vargas; Juan Mesa → Juan Mesa; Walter Vargas |
| 45 | Crear Estilo para los mensajes del sistema |  |  | resources Walter Vargas; Juan Mesa → Juan Mesa; Walter Vargas |
| 48 | Crear Formulario de Registro de Instituciones |  |  | resources Walter Vargas [67%]; Juan Mesa [67%] → Juan Mesa [67%]; Walter Vargas [67%] |
| 53 | Revisiones Finales |  |  | resources José Rey; Walter Vargas [50%]; Juan Mesa [50%] → Juan Mesa [50%]; Walter Vargas [50%]; José Rey |
| 66 | Gestionar Reportes del sistema |  |  | resources José Rey; Walter Vargas → Walter Vargas; José Rey |
| 80 | **Sprint III** |  | 2010-06-20 → 2010-09-26 (+98d) |  |
| 81 | Reunión Inicial de Planificación del Sprint | 2010-05-18 → 2010-07-20 (+63d) | 2010-05-18 → 2010-07-20 (+63d) | constraint must start on 2010-05-18 → must start on 2010-07-20 |
| 82 | **Diseño** | 2010-05-18 → 2010-07-20 (+63d) | 2010-05-24 → 2010-07-26 (+63d) |  |
| 83 | Actualización del Diseño del Prototipo V.3.0 | 2010-05-18 → 2010-07-20 (+63d) | 2010-05-19 → 2010-07-21 (+63d) |  |
| 84 | Tercera Reunión con el Product Owner | 2010-05-18 → 2010-07-20 (+63d) | 2010-05-19 → 2010-07-21 (+63d) |  |
| 85 | Actualización del Manual del estilo Web V.3.0 | 2010-05-18 → 2010-07-20 (+63d) | 2010-05-20 → 2010-07-22 (+63d) |  |
| 86 | Actualización de las Especificaciones de los Requerimientos del Sistema V.3.0 | 2010-05-18 → 2010-07-20 (+63d) | 2010-05-19 → 2010-07-21 (+63d) |  |
| 87 | Actualización del Documento de Arquitectura de Software V.3.0 | 2010-05-18 → 2010-07-20 (+63d) | 2010-05-24 → 2010-07-26 (+63d) |  |
| 88 | Actualización de los Diagramas del Sistema | 2010-05-18 → 2010-07-20 (+63d) | 2010-05-19 → 2010-07-21 (+63d) |  |
| 90 | Crear Modulo de Autentificación y Autorización |  |  | resources José Rey; Walter Vargas [35%]; Juan Mesa [35%] → Juan Mesa [35%]; Walter Vargas [35%]; José Rey |
| 100 | Revisiones Finales |  |  | resources José Rey; Walter Vargas [50%]; Juan Mesa [50%] → Juan Mesa [50%]; Walter Vargas [50%]; José Rey |
| 113 | Tercera Entrega | 2010-06-21 → 2010-09-27 (+98d) | 2010-06-21 → 2010-09-27 (+98d) | constraint must start on 2010-06-21 → must start on 2010-09-27 |
| 116 | Plan de Formacion de Capacitaciones V.1.0 |  |  | resources Walter Vargas; Juan Mesa → Juan Mesa; Walter Vargas |
| 117 | Presentación para Capacitacion V.1.0 |  |  | resources Walter Vargas; Juan Mesa → Juan Mesa; Walter Vargas |
